# SROP_interno

Schedule from MS Project, 2018-02-20 to 2018-06-12.

## Calendars

- Standard: Mon-Fri 08:00-12:00, 13:00-17:00; Sat-Sun off.

## Schedule

| ID | WBS | Task | Duration | Start | Finish | Total slack | Constraint |
| --- | --- | --- | --- | --- | --- | --- | --- |
| 1 | 1 | **Construcción de Pantallas (interfaces)** | 78d? | 2018-02-20 | 2018-06-07 | 3d |  |
| 2 | 1.1 | Pantalla de Login: logearse al Sistema a traves de autenticación en base de datos | 3d | 2018-02-20 | 2018-02-22 | 68d | start no earlier than 2018-02-20 |
| 3 | 1.2 | **ORGANIZACIÓN POLITICA** | 75d? | 2018-02-23 | 2018-06-07 | 3d |  |
| 4 | 1.2.1 | **Inscripción** | 6d? | 2018-02-23 | 2018-03-02 | 72d |  |
| 5 | 1.2.1.1 | Manejo del Tipo de Libro, Número Partida y Número de Tomo | 1d? | 2018-02-23 | 2018-02-23 | 77d | start no earlier than 2018-02-23 |
| 6 | 1.2.1.2 | Cargar Simbolo para PP o MR | 1d? | 2018-02-26 | 2018-02-26 | 66d | start no earlier than 2018-02-26 |
| 7 | 1.2.1.3 | Registro de la Direccion | 1d? | 2018-02-27 | 2018-02-27 | 65d | start no earlier than 2018-02-27 |
| 8 | 1.2.1.4 | Grabar datos | 1d? | 2018-02-28 | 2018-02-28 | 64d | start no earlier than 2018-02-27 |
| 9 | 1.2.1.5 | Revisón de lo desarrollado | 2d | 2018-03-01 | 2018-03-02 | 62d | start no earlier than 2018-02-28 |
| 10 | 1.2.2 | **Etapas** | 22d | 2018-03-05 | 2018-04-03 | 50d |  |
| 11 | 1.2.2.1 | Generar Num. Tomo, Partida al momento de inscribir OP | 3d | 2018-03-05 | 2018-03-07 | 58d | start no earlier than 2018-03-05 |
| 12 | 1.2.2.2 | Detalle de Etapa: Formulario de datos | 3d | 2018-03-08 | 2018-03-12 | 55d | start no earlier than 2018-03-07 |
| 13 | 1.2.2.3 | Eliminar fila de la Grilla Etapas: validación y renumeracion de etapas | 3d | 2018-03-13 | 2018-03-15 | 52d | start no earlier than 2018-03-12 |
| 14 | 1.2.2.4 | Insertar fila en Grilla Etapas: validación y renumeracion de etapas | 3d | 2018-03-16 | 2018-03-20 | 49d | start no earlier than 2018-03-15 |
| 15 | 1.2.2.5 | Append fila en Grilla Etapas: validación | 3d | 2018-03-21 | 2018-03-23 | 46d | start no earlier than 2018-03-20 |
| 16 | 1.2.2.6 | Manejo del Web Service de MTD para jalar Asunto y Fecha del expediente MTD | 1d | 2018-03-26 | 2018-03-26 | 60d | start no earlier than 2018-03-23 |
| 17 | 1.2.2.7 | Cada vez que se registre etapa, actualizar ultima etapa de inscripcion en el maestro de OP | 1d | 2018-03-28 | 2018-03-28 | 58d | start no earlier than 2018-03-27 |
| 18 | 1.2.2.8 | Revisión de lo desarrollado | 2d | 2018-04-02 | 2018-04-03 | 50d | start no earlier than 2018-04-02 |
| 19 | 1.2.3 | **Síntesis** | 7d | 2018-04-04 | 2018-04-12 | 43d |  |
| 20 | 1.2.3.1 | Formulario de datos de Síntesis | 1d | 2018-04-04 | 2018-04-04 | 38d | start no earlier than 2018-04-03 |
| 21 | 1.2.3.2 | Recoger datos de las tablas al formulario de la vista | 1d | 2018-04-05 | 2018-04-05 | 37d | start no earlier than 2018-04-04 |
| 22 | 1.2.3.3 | Recoger logo del maestro de OP y grabarlo en la tabla de Sintesis. Logo no puede modificarse una vez que la OP alcanzo inscripcion. | 1d | 2018-04-06 | 2018-04-06 | 36d | start no earlier than 2018-04-05 |
| 23 | 1.2.3.4 | Grabar datos | 1d | 2018-04-09 | 2018-04-09 | 35d | start no earlier than 2018-04-06 |
| 24 | 1.2.3.5 | Reutilizar el reporte en Crystal Report | 1d | 2018-04-10 | 2018-04-10 | 34d | start no earlier than 2018-04-09 |
| 25 | 1.2.3.6 | Revisión de lo desarrollado | 2d | 2018-04-11 | 2018-04-12 | 32d | start no earlier than 2018-04-10 |

| ID | WBS | Task | Duration | Start | Finish | Total slack | Constraint |
| --- | --- | --- | --- | --- | --- | --- | --- |
| 26 | 1.2.4 | **Estatutos** | 6d? | 2018-04-16 | 2018-04-23 | 36d |  |
| 27 | 1.2.4.1 | Grilla de Estatutos: Numeración autogenerada para cada fila | 1d? | 2018-04-16 | 2018-04-16 | 41d | start no earlier than 2018-04-16 |
| 28 | 1.2.4.2 | Detalle de Estatuto: Formulario de datos | 1d? | 2018-04-17 | 2018-04-17 | 29d | start no earlier than 2018-04-16 |
| 29 | 1.2.4.3 | Cargar Archivo PDF | 1d? | 2018-04-18 | 2018-04-18 | 28d | start no earlier than 2018-04-17 |
| 30 | 1.2.4.4 | Grabar datos: Archivo PDF, fecha de estatuto, Años de vigencia de los directivos de acuerdo al Estatuto | 1d? | 2018-04-19 | 2018-04-19 | 27d | start no earlier than 2018-04-18 |
| 31 | 1.2.4.5 | Eliminar fila de grilla | 1d? | 2018-04-20 | 2018-04-20 | 26d | start no earlier than 2018-04-19 |
| 32 | 1.2.4.6 | Revisión de lo desarrollado | 1d? | 2018-04-23 | 2018-04-23 | 25d | start no earlier than 2018-04-20 |
| 33 | 1.2.5 | **Resoluciones** | 5d? | 2018-04-24 | 2018-04-30 | 31d |  |
| 34 | 1.2.5.1 | Grilla de Resoluciones: orden de la grilla. Numeración autogenerada para cada fila | 1d? | 2018-04-24 | 2018-04-24 | 24d | start no earlier than 2018-04-23 |
| 35 | 1.2.5.2 | Detalle de Resolución: Formulario de datos | 1d? | 2018-04-25 | 2018-04-25 | 23d | start no earlier than 2018-04-24 |
| 36 | 1.2.5.3 | Grabar datos | 1d? | 2018-04-26 | 2018-04-26 | 22d | start no earlier than 2018-04-25 |
| 37 | 1.2.5.4 | Eliminar resolución | 1d? | 2018-04-27 | 2018-04-27 | 21d | start no earlier than 2018-04-26 |
| 38 | 1.2.5.5 | Revisión de lo desarrollado | 1d? | 2018-04-30 | 2018-04-30 | 20d | start no earlier than 2018-04-27 |
| 39 | 1.2.6 | **Asientos** | 5d? | 2018-05-02 | 2018-05-08 | 25d |  |
| 40 | 1.2.6.1 | Grilla de Asientos: Numeración autogenerada para cada fila | 1d? | 2018-05-02 | 2018-05-02 | 29d | start no earlier than 2018-05-02 |
| 41 | 1.2.6.2 | Detalle de Asiento: Formulario de datos. Combo de Tipo de Asientos. Permite filtrar por valor del combo. | 1d? | 2018-05-03 | 2018-05-03 | 17d | start no earlier than 2018-05-02 |
| 42 | 1.2.6.3 | Grabar datos | 1d? | 2018-05-04 | 2018-05-04 | 16d | start no earlier than 2018-05-03 |
| 43 | 1.2.6.4 | Eliminar Asiento | 1d? | 2018-05-07 | 2018-05-07 | 15d | start no earlier than 2018-05-04 |
| 44 | 1.2.6.5 | Revisión de lo desarrollado | 1d? | 2018-05-08 | 2018-05-08 | 14d | start no earlier than 2018-05-07 |
| 45 | 1.2.7 | **Modificación de Partida** | 8d? | 2018-05-09 | 2018-05-18 | 17d |  |
| 46 | 1.2.7.1 | Grilla de Modificación de Partida: Numeración autogenerada para cada fila, nuevo diseño planteado por Fernando | 2d | 2018-05-09 | 2018-05-10 | 12d | start no earlier than 2018-05-08 |
| 47 | 1.2.7.2 | Detalle de Modif. Partida: Formulario de datos. Nuevo diseño planteado por Fernando. Grilla dentro del Detalle. | 2d | 2018-05-11 | 2018-05-14 | 25d | start no earlier than 2018-05-10 |
| 48 | 1.2.7.3 | Manejo del Web Service de MTD para jalar Asunto y Fecha del expediente MTD | 1d? | 2018-05-15 | 2018-05-15 | 24d | start no earlier than 2018-05-14 |
| 49 | 1.2.7.4 | Grabar datos | 1d? | 2018-05-16 | 2018-05-16 | 23d | start no earlier than 2018-05-15 |
| 50 | 1.2.7.5 | Eliminar Modificacion Partida | 1d? | 2018-05-17 | 2018-05-17 | 22d | start no earlier than 2018-05-16 |
| 51 | 1.2.7.6 | Revisión de lo desarrollado | 1d? | 2018-05-18 | 2018-05-18 | 21d | start no earlier than 2018-05-17 |

| ID | WBS | Task | Duration | Start | Finish | Total slack | Constraint |
| --- | --- | --- | --- | --- | --- | --- | --- |
| 52 | 1.2.8 | **Constancia O.P** | 5d? | 2018-05-21 | 2018-05-25 | 12d |  |
| 53 | 1.2.8.1 | Grilla de Constancias de O.P | 1d? | 2018-05-21 | 2018-05-21 | 20d | start no earlier than 2018-05-18 |
| 54 | 1.2.8.2 | Edición de Constancia de O.P | 1d? | 2018-05-22 | 2018-05-22 | 19d | start no earlier than 2018-05-21 |
| 55 | 1.2.8.3 | Eliminar Constancia | 1d? | 2018-05-23 | 2018-05-23 | 18d | start no earlier than 2018-05-22 |
| 56 | 1.2.8.4 | Impresion de Constancia | 1d? | 2018-05-24 | 2018-05-24 | 17d | start no earlier than 2018-05-23 |
| 57 | 1.2.8.5 | Revisión de lo desarrollado | 1d? | 2018-05-25 | 2018-05-25 | 16d | start no earlier than 2018-05-24 |
| 58 | 1.2.9 | **Vinculación de OP** | 5d? | 2018-05-28 | 2018-06-01 | 7d |  |
| 59 | 1.2.9.1 | Grilla de OP vinculadas | 1d? | 2018-05-28 | 2018-05-28 | 15d | start no earlier than 2018-05-25 |
| 60 | 1.2.9.2 | Búsqueda de OP para vincular | 1d? | 2018-05-29 | 2018-05-29 | 14d | start no earlier than 2018-05-28 |
| 61 | 1.2.9.3 | Combo de Motivos de Vinculación | 1d? | 2018-05-30 | 2018-05-30 | 13d | start no earlier than 2018-05-29 |
| 62 | 1.2.9.4 | Botón para vincular | 1d? | 2018-05-31 | 2018-05-31 | 12d | start no earlier than 2018-05-30 |
| 63 | 1.2.9.5 | Revisión de lo desarrollado | 1d? | 2018-06-01 | 2018-06-01 | 11d | start no earlier than 2018-05-31 |
| 64 | 1.2.10 | **Asignar abogado a expediente OP** | 4d? | 2018-06-04 | 2018-06-07 | 3d |  |
| 65 | 1.2.10.1 | Combo de abogados del ROP | 1d? | 2018-06-04 | 2018-06-04 | 10d | start no earlier than 2018-06-01 |
| 66 | 1.2.10.2 | Grilla de Abogados asignados | 1d? | 2018-06-05 | 2018-06-05 | 9d | start no earlier than 2018-06-04 |
| 67 | 1.2.10.3 | En la misma grilla se adiciona, modifica o elimina abogado asignado | 1d? | 2018-06-06 | 2018-06-06 | 8d | start no earlier than 2018-06-05 |
| 68 | 1.2.10.4 | Revisión de lo desarrollado | 1d? | 2018-06-07 | 2018-06-07 | 7d | start no earlier than 2018-06-06 |
| 69 | 2 | PRUEBAS DEL SISTEMA | 3d | 2018-06-08 | 2018-06-12 | 0d | start no earlier than 2018-06-07 |
